# TaskList

Schedule from MS Project, 2010-10-13 to 2011-04-15.
ABC

## Calendars

- Standard: Mon-Fri 08:00-12:00, 13:00-17:00; Sat-Sun off. Exceptions (off unless hours are given): 2010-10-02 to 2011-04-30 08:00-12:00, 13:00-17:00 (recurring).

## Resources

| Resource |
| --- |
| All members |
| Chính |
| Thảo |
| Long |
| Ly |
| Giang |
| Developers |
| Designers |
| Coders |
| All team members |
| Chinh |
| Thao |
| ChinhPLQ |

## Schedule

| ID | WBS | Task | Type | Duration | Start | Finish | Predecessors | Total slack | Free slack | Constraint | Deadline | Resources | Work |
| --- | --- | --- | --- | --- | --- | --- | --- | --- | --- | --- | --- | --- | --- |
| 1 | 1 | **A. MODULE A** |  | 180d? | 2010-10-13 | 2011-04-10 |  | -161d | 0d |  | 2010-10-31 |  | 9888h |
| 2 | 1.1 | **1. BUSINESS ANALYSIS** |  | 11d? | 2010-10-13 | 2010-10-23 |  | -106d | 0d |  |  |  | 424h |
| 3 | 1.1.1 | 1.1 Understand Habubank's Documents |  | 9d? | 2010-10-13 | 2010-10-21 |  | -104d | 0d | start no earlier than 2010-10-13 |  | Long; Ly; Chính; Giang; Thảo | 360h |
| 4 | 1.1.2 | 1.2 Understand EPI's Document |  | 1.6d? | 2010-10-22 | 2010-10-23 |  | -91d | 0d | finish no earlier than 2010-10-23 |  | Long; Ly; Chính; Giang; Thảo | 64h |
| 5 | 1.2 | BUSINESS ANALYSIS REPORT | milestone | 0d | 2010-10-23 | 2010-10-23 |  | 9d |  | start no earlier than 2010-10-23 |  |  |  |
| 6 | 1.3 | **2. SYSTEM ANALYSIS** |  | 32d? | 2010-10-25 | 2010-11-25 | 2 | -107d | 0d |  |  |  | 1784h |
| 7 | 1.3.1 | **2.1 ELICITATION** |  | 22d? | 2010-10-25 | 2010-11-15 |  | -97d | 0d |  |  |  | 824h |
| 8 | 1.3.1.1 | 2.1.0 Approach determination |  | 1.4d? | 2010-10-30 | 2010-10-31 |  | -82d | 0d | finish no earlier than 2010-10-31 |  | Long; Ly; Chính; Giang; Thảo | 56h |
| 9 | 1.3.1.2 | 2.1.1 Account Management Module |  | 5d? | 2010-11-01 | 2010-11-05 |  | -87d | 0d | start no earlier than 2010-11-01 |  | Chính; Thảo | 80h |
| 10 | 1.3.1.3 | 2.1.2 Parameter Management Module |  | 12d? | 2010-10-25 | 2010-11-05 |  | -87d | 0d | finish no earlier than 2010-11-05 |  | Long; Ly; Giang | 288h |
| 11 | 1.3.1.4 | 2.1.3 Input Module |  | 5d? | 2010-11-06 | 2010-11-10 |  | -92d | 0d | finish no earlier than 2010-11-10 |  | Chính; Thảo | 80h |
| 12 | 1.3.1.5 | 2.1.4 Credit Ranking Module |  | 10d? | 2010-11-06 | 2010-11-15 |  | -97d | 0d | finish no earlier than 2010-11-15 |  | Long; Ly; Giang | 240h |
| 13 | 1.3.1.6 | 2.1.5 Reports Module |  | 5d? | 2010-11-11 | 2010-11-15 |  | -97d | 0d | finish no earlier than 2010-11-15 |  | Chính; Thảo | 80h |
| 14 | 1.3.2 | 2.2 ANALYSIS AND NEGOTIATION |  | 22d? | 2010-10-25 | 2010-11-15 |  | -107d | 0d | finish no earlier than 2010-11-15 |  | Long; Ly; Chính; Giang; Thảo | 880h |
| 15 | 1.3.3 | REQUIREMENTS COLLECTION | milestone | 0d | 2010-11-15 | 2010-11-15 | 14 | -107d | 0d |  |  |  |  |
| 16 | 1.3.4 | 2.3 VALIDATION |  | 5d? | 2010-11-16 | 2010-11-20 | 15 | -92d | 0d | finish no earlier than 2010-11-20 |  | Long | 40h |
| 17 | 1.3.5 | 2.4 DESCRIBE REQUIREMENTS |  | 5d? | 2010-11-21 | 2010-11-25 | 16 | -92d | 0d | finish no earlier than 2010-11-25 |  | Long | 40h |
| 18 | 1.4 | SYSTEM SPECIFICATION | milestone | 0d | 2010-11-25 | 2010-11-25 |  | -75d | 0d | start no earlier than 2010-11-25 |  |  |  |
| 19 | 1.5 | **3. SYSTEM DESIGN** |  | 63d? | 2010-11-26 | 2011-01-27 | 6 | -114d | 0d |  |  |  | 2848h |
| 20 | 1.5.1 | 3.1 ARCHITECTURE DESIGN |  | 13d? | 2010-11-26 | 2010-12-08 |  | -107d | 0d | finish no earlier than 2010-12-08 |  | Long; Ly; Chính | 312h |
| 21 | 1.5.2 | 3.2 ERD DESIGN |  | 23d? | 2010-12-09 | 2010-12-31 | 20 | -107d | 0d | finish no earlier than 2010-12-31 |  | Long; Ly; Chính | 552h |
| 22 | 1.5.3 | LIST OF TABLES DESIGNED | milestone | 0d | 2010-12-31 | 2010-12-31 | 21 | -107d | 0d |  |  | Long; Ly; Chính |  |
| 23 | 1.5.4 | **3.3 DETAILED DESIGN** |  | 27d? | 2011-01-01 | 2011-01-27 | 22 | -114d | 0d |  |  | Long; Ly; Chính; Giang | 1984h |
| 24 | 1.5.4.1 | 3.3.1 BSN module |  | 20d? | 2011-01-01 | 2011-01-20 |  | -107d | 0d | start no earlier than 2011-01-01 |  | Thảo; Giang | 320h |
| 25 | 1.5.4.2 | 3.3.2 FI & NFI module |  | 20d? | 2011-01-01 | 2011-01-20 |  | -107d | 0d | start no earlier than 2011-01-01 |  | Ly | 160h |
| 26 | 1.5.4.3 | 3.3.3 INV module |  | 20d? | 2011-01-01 | 2011-01-20 |  | -107d | 0d | start no earlier than 2011-01-01 |  | Chính | 160h |
| 27 | 1.5.4.4 | 3.3.4 SYS module |  | 20d? | 2011-01-01 | 2011-01-20 |  | -107d | 0d | start no earlier than 2011-01-01 |  | Long | 160h |
| 28 | 1.5.4.5 | 3.3.5 RNK module |  | 20d? | 2011-01-01 | 2011-01-20 |  | -107d | 0d | start no earlier than 2011-01-01 |  | Long | 160h |
| 29 | 1.5.4.6 | 3.3.6 RPT module |  | 20d? | 2011-01-01 | 2011-01-20 |  | -107d | 0d | start no earlier than 2011-01-01 |  | Ly | 160h |
| 30 | 1.5.4.7 | 3.3.7. REVIEW DETAILED DESIGN |  | 7d? | 2011-01-21 | 2011-01-27 |  | -114d | 0d | finish no earlier than 2011-01-27 |  |  |  |

Notes:
- 1: Description: The module of ranking credit for customers. That's the operational work
- 3: Description: HabuBank provides documents for the project team. All team members must understand those to get the knowledge of domain logic
- 4: Description: The old system has document before: Using guide to the old system". Understanding this will helps main functions of the proposed system
- 5: Description: Members report the researching works
- 7: Description: Discovering the requirements
- 8: Description: Meeting to help determine the approach for requirements engineering
- 9: Description: Study requirements of system accounts management
- 10: Description: Study requirements of system parameters management
- 11: Description: Study requirements of inputting information to the system: what data should or should not be inputted
- 12: Description: Study requirements for processing ranking credit for a customer
- 13: Description: Study what is required when creating reports of credit ranking
- 14: Description: Analyze all the requirements collected and discuss in team and customer
- 15: Description: All the requirements of functionality and non-functionality that have been collected and analyzed
- 16: Description: Validate again all the requirements collected
- 17: Description: Describe requirements in SRS form provided by university
- 18: Description: Completed SRS for the sytem (module A)
- 20: Description: Create architecture for the system
- 21: Description: List entities needed and create diagram as well as fields for each entity
- 22: Description: Database designed for the system
- 24: Description: Business module: industries, type, lines…
- 25: Description: Financial & non-financial index process design
- 26: Description: Individual parameters management design
- 27: Description: System management classes design
- 28: Description: detailed design for process ranking for customers
- 29: Description: Detailed design for report requirements

| ID | WBS | Task | Type | Duration | Start | Finish | Predecessors | Total slack | Free slack | Constraint | Resources | Work | Description |
| --- | --- | --- | --- | --- | --- | --- | --- | --- | --- | --- | --- | --- | --- |
| 31 | 1.6 | **4. IMPLEMENTATION** |  | 47d? | 2011-02-13 | 2011-03-31 | 19 | -151d | 0d |  | Long; Ly; Chính; Giang; Thảo | 3296h |  |
| 32 | 1.6.1 | 4.1 BSN Module |  | 16d? | 2011-02-13 | 2011-02-28 |  | -120d | 0d | finish no earlier than 2011-02-28 | Ly | 128h | Coding for Business Parameters |
| 33 | 1.6.2 | 4.2 FI & NFI Module |  | 26d? | 2011-02-13 | 2011-03-10 |  | -130d | 0d | finish no earlier than 2011-03-10 | Long | 208h | Coding for Financial & Non-Financial parameters |
| 34 | 1.6.3 | 4.3 INV Module |  | 26d? | 2011-02-13 | 2011-03-10 |  | -130d | 0d | finish no earlier than 2011-03-10 | Chinh; Ly | 416h | Coding for Individual Parameters |
| 35 | 1.6.4 | 4.4 SYS Module |  | 21d? | 2011-02-13 | 2011-03-05 |  | -125d | 0d | finish no earlier than 2011-03-05 | Giang; Thao | 336h | Coding for System Parameters |
| 36 | 1.6.5 | 4.5 RNK Module |  | 24d? | 2011-03-08 | 2011-03-31 |  | -151d | 0d | finish no earlier than 2011-03-31 | Ly | 192h | Coding for Ranking Credit process |
| 37 | 1.6.6 | 4.6 RPT Module |  | 17d? | 2011-03-15 | 2011-03-31 |  | -151d | 0d | finish no earlier than 2011-03-31 | ChinhPLQ | 136h | Coding for Reporting |
| 38 | 1.7 | **5. TESTING** |  | 136d? | 2010-11-26 | 2011-04-10 | 18 | -161d | 0d |  |  | 1536h |  |
| 39 | 1.7.1 | Integration Test Design |  | 51d? | 2010-11-26 | 2011-01-15 |  | -76d | 0d | finish no earlier than 2011-01-15 | Giang; Thảo | 816h |  |
| 40 | 1.7.2 | Perform Uniit Test |  | 40d? | 2011-02-20 | 2011-03-31 |  | -161d | 0d | finish no earlier than 2011-03-31 | Coders | 320h |  |
| 41 | 1.7.3 | Perform Integration Test & fix bugs |  | 10d? | 2011-04-01 | 2011-04-10 | 40 | -161d | 0d | start no earlier than 2011-04-01 | Long; Ly; Chính; Giang; Thảo | 400h |  |
| 42 | 1.7.4 | TESTING REPORT | milestone | 0d | 2011-04-10 | 2011-04-10 |  | -160d | 0d | start no earlier than 2011-04-10 |  |  |  |
| 43 | 2 | **B. MODULE B** |  | 41d? | 2011-03-01 | 2011-04-10 |  | 4d |  |  |  |  | Module of Data mining |
| 44 | 2.1 | Data mining clustering for Business customers |  | 31d? | 2011-03-01 | 2011-03-31 |  | 14d |  | finish no earlier than 2011-03-31 |  |  |  |
| 45 | 2.2 | Data mining clustering for Business customers |  | 10d? | 2011-04-01 | 2011-04-10 |  | 4d |  | finish no earlier than 2011-04-10 |  |  |  |
| 46 | 3 | SYSTEM DELIVERED | milestone | 0d | 2011-04-15 | 2011-04-15 |  | 0d |  | start no earlier than 2011-04-15 |  |  |  |
